# 风险管理开发脚手架工作计划

Schedule from MS Project, 2008-08-19 to 2008-09-08.
Microsoft

## Calendars

- 标准: Mon-Fri 08:00-12:00, 13:00-17:00; Sat-Sun off.

## Resources

| Resource |
| --- |
| 韦海晗 |

## Schedule

| ID | WBS | Task | Duration | Start | Finish | Predecessors | Total slack | Free slack | Resources | Work |
| --- | --- | --- | --- | --- | --- | --- | --- | --- | --- | --- |
| 1 | 1 | 编写工作任务说明书 | 2d | 2008-08-19 | 2008-08-20 |  | 0d |  | 韦海晗 | 16h |
| 2 | 2 | 构建开发环境 | 1d | 2008-08-21 | 2008-08-21 | 1 | 0d |  | 韦海晗 | 8h |
| 3 | 3 | 搭建系统框架 | 1d | 2008-08-22 | 2008-08-22 | 2 | 0d |  | 韦海晗 | 8h |
| 4 | 4 | 开发环境和技术培训 | 1d | 2008-08-25 | 2008-08-25 | 3 | 0d |  |  |  |
| 5 | 5 | **组织机构管理示例** | 5d | 2008-08-26 | 2008-09-01 | 4 | 0d |  |  |  |
| 6 | 5.1 | 登录和页面框架 | 2d | 2008-08-26 | 2008-08-27 | 3 | 0d |  |  |  |
| 7 | 5.2 | CRUD示例的编写 | 1d | 2008-08-28 | 2008-08-28 | 6 | 0d |  |  |  |
| 8 | 5.3 | 异常处理集成 | 1d | 2008-08-29 | 2008-08-29 | 7 | 0d |  |  |  |
| 9 | 5.4 | 日志集成 | 1d | 2008-09-01 | 2008-09-01 | 8 | 0d |  |  |  |
| 10 | 6 | 安全集成 | 3d | 2008-09-02 | 2008-09-04 | 5 | 2d |  |  |  |
| 11 | 7 | 缓存集成 | 1d | 2008-08-26 | 2008-08-26 | 4 | 9d |  |  |  |
| 12 | 8 | 调度集成 | 1d | 2008-08-26 | 2008-08-26 | 4 | 9d |  |  |  |
| 13 | 9 | 工具类集成 | 1d | 2008-08-26 | 2008-08-26 | 4 | 7d |  |  |  |
| 14 | 10 | 文件上传集成 | 1d | 2008-08-26 | 2008-08-26 | 4 | 7d |  |  |  |
| 15 | 11 | 文件导出集成 | 2d | 2008-08-26 | 2008-08-27 | 4 | 6d |  |  |  |
| 16 | 12 | UI组件集成及示例 | 5d | 2008-09-02 | 2008-09-08 | 5, 4 | 0d |  |  |  |
| 17 | 13 | 图形组件集成及示例 | 5d | 2008-08-26 | 2008-09-01 | 4 | 3d |  |  |  |
| 18 | 14 | 工作流集成及示例 | 5d | 2008-08-26 | 2008-09-01 | 4 | 1d | 0d |  |  |
| 19 | 15 | 测试及bug修改 | 2d | 2008-09-02 | 2008-09-03 | 18 | 1d | 0d |  |  |
| 20 | 16 | 编写开发手册，指南和开发规范等相关文档 | 2d | 2008-09-04 | 2008-09-05 | 19, 18 | 1d |  |  |  |

Notes:
- 1: 确定项目代号、确定需求、工作方式和任务计划。
- 2: 构建开发环境如数据库、IDE、任务管理平台和SVN等。
- 3: 搭建系统框架，集成核心框架。
